# Increase Enrollment in MHV v2

How a schedule from MS Project changed from version to version. A marks actual dates.

## Version 1 (saved 2014-09-16, file Increase Enrollment in MHV Project Schedule v2.mpp)

Note of the change: add folders

| ID | WBS | Task | Duration | Start | Finish | Predecessors | Complete | Total float | Constraint |
| --- | --- | --- | --- | --- | --- | --- | --- | --- | --- |
| 1 | 1 | **T4-0492 Increase Enrollment in MyHealtheVet Development** | 196d | 2014-08-08 | 2015-05-08 |  | 29% |  |  |
| 2 | 1.1 | **Base Period (6 months)** | 125d | 2014-08-18 A | 2015-02-06 |  | 47% |  |  |
| 3 | 1.1.1 | **Sprint 0 - Planning and Environment Setup** | 15d | 2014-08-18 A | 2014-09-05 A |  | 100% |  |  |
| 4 |  | Develop Contract Management Plan | 15d | 2014-08-18 A | 2014-09-05 A |  | 100% |  |  |
| 5 |  | Set up FTL Development & Test Environments | 15d | 2014-08-18 A | 2014-09-05 A |  | 100% |  |  |
| 6 |  | Complete VA Required Training | 15d | 2014-08-18 A | 2014-09-05 A |  | 100% |  |  |
| 7 |  | Obtain Clearance and Access | 15d | 2014-08-18 A | 2014-09-05 A |  | 100% |  |  |
| 8 |  | Facilitate Requirement/Design Definition with VA SMEs | 15d | 2014-08-18 A | 2014-09-05 A |  | 100% |  |  |
| 9 |  | User Story Template Approval | 15d | 2014-08-18 A | 2014-09-05 A |  | 100% |  |  |
| 10 | 1.1.2 | **Sprint 1 - Development** | 20d | 2014-09-08 A | 2014-10-03 | 3 | 2% | 0d |  |
| 11 |  | Modify VistA's PI for MHV Enrollment Alert | 10d | 2014-09-08 A | 2014-09-19 |  | 5% | 10d |  |
| 12 |  | Modify VistA’s PI For MHV Enrollment Discussion Query & Response | 10d | 2014-09-22 | 2014-10-03 |  |  |  |  |
| 13 |  | Review Prototype Changes | 1d | 2014-10-03 | 2014-10-03 |  |  | 0d | start no earlier than 2014-10-03 |
| 14 | 1.1.3 | **Sprint 2 - Development** | 20d | 2014-10-06 | 2014-10-31 | 10 |  | 0d |  |
| 15 |  | Modify VistA’s PI For Three (3) MHV Enrollment Questions & Reason Codes | 20d | 2014-10-06 | 2014-10-31 |  |  | 0d |  |
| 16 |  | Review Prototype Changes | 1d | 2014-10-31 | 2014-10-31 |  |  | 0d | start no earlier than 2014-10-31 |
| 17 | 1.1.4 | **Sprint 3 - Development** | 20d | 2014-11-03 | 2014-11-28 | 14 |  | 0d |  |
| 18 |  | Modify VistA’s PI For MHV Enrollment Consistency Check | 20d | 2014-11-03 | 2014-11-28 |  |  | 0d |  |
| 19 |  | Review Prototype Changes | 1d | 2014-11-28 | 2014-11-28 |  |  | 0d | start no earlier than 2014-11-28 |
| 20 | 1.1.5 | **Sprint 4 - Testing** | 20d | 2014-12-01 | 2014-12-26 | 17 |  | 0d |  |
| 21 |  | Component and Integration Testing | 5d | 2014-12-01 | 2014-12-05 |  |  |  |  |
| 22 |  | Conduct Formal Prototype UFT | 10d | 2014-12-08 | 2014-12-19 |  |  |  |  |
| 23 |  | Make Changes From Formal Prototype UFT | 5d | 2014-12-22 | 2014-12-26 | 22 |  | 15d |  |
| 24 | 1.1.6 | **Sprint 5 - Correct Deficiencies** | 15d | 2015-01-19 | 2015-02-06 |  |  |  |  |
| 25 |  | Correct Final Deficiencies & Update Collaborative Package | 15d | 2015-01-19 | 2015-02-06 | 20 |  | 0d |  |
| 26 |  | Final Prototype Demonstration & Collaborative Package Delivery | 5d | 2015-02-02 | 2015-02-06 |  |  | 0d | start no earlier than 2015-02-02 |
| 27 | 1.2 | **Optional Task (3 months)** | 60d | 2015-02-09 | 2015-05-01 |  |  |  |  |
| 28 |  | Support External Certification Testing | 60d | 2015-02-09 | 2015-05-01 | 26 |  |  |  |
| 29 |  | Support Deployment as necessary | 60d | 2015-02-09 | 2015-05-01 | 28SS |  |  |  |

## Version 2 (saved 2014-10-29, file Increase Enrollment in MHV Project Schedule_Oct2014.mpp)

Note of the change: sprint 2

Last finish stays 2015-05-08. Complete tasks 6 → 11.

Added:

| ID | Task | Duration | Start | Finish |
| --- | --- | --- | --- | --- |
| 19 | Final User Story Refinements | 10d | 2014-11-17 | 2014-11-28 |

Changed:

| ID | Task | Start | Finish | Duration | Complete | Total float | Other |
| --- | --- | --- | --- | --- | --- | --- | --- |
| 1 | **T4-0492 Increase Enrollment in MyHealtheVet Development** |  |  |  | 29% → 42% |  |  |
| 2 | **Base Period (6 months)** |  |  |  | 47% → 68% |  |  |
| 10 | **Sprint 1 - Development** |  | 2014-10-03 A |  | 2% → 100% | 0d → none |  |
| 11 | US#1 Modify VistA's PI for MHV Enrollment Alert |  | 2014-09-19 A |  | 5% → 100% | 10d → none | was named Modify VistA's PI for MHV Enrollment Alert |
| 12 | US#2 Modify VistA’s PI For MHV Enrollment Socialization Question & Responses | 2014-09-22 A | 2014-10-03 A |  | 0% → 100% |  | was named Modify VistA’s PI For MHV Enrollment Discussion Query & Response |
| 13 | Review Prototype Changes | 2014-10-03 A | 2014-10-03 A |  | 0% → 100% | 0d → none |  |
| 14 | **Sprint 2 - Development** | 2014-10-06 A | 2014-10-31 A |  | 0% → 100% | 0d → none |  |
| 15 | US#3 Modify VistA’s PI For Three (3) MHV Enrollment Questions & Reason Codes | 2014-10-06 A | 2014-10-31 A |  | 0% → 100% | 0d → none | was named Modify VistA’s PI For Three (3) MHV Enrollment Questions & Reason Codes |
| 16 | Review Prototype Changes | 2014-10-31 A | 2014-10-31 A |  | 0% → 100% | 0d → none |  |
| 18 | US#4 Modify VistA’s PI For MHV Enrollment Consistency Check |  | 2014-11-28 → 2014-11-14 (-14d) | 20d → 10d |  | 0d → 10d | was named Modify VistA’s PI For MHV Enrollment Consistency Check; constraint none → finish no earlier than 2014-11-14 |
